# 售后维保&&远程视频监控功能开发计划

Schedule from a web Gantt chart, 2024-04-15 to 2024-05-24.
Saturdays and Sundays are off

## Schedule

| ID | WBS | Task | Type | Duration | Start | Finish | Predecessors | inPeople | Status |
| --- | --- | --- | --- | --- | --- | --- | --- | --- | --- |
| 2 | 1 | **售后维保App** |  | 30d | 2024-04-15 | 2024-05-24 |  |  |  |
| 3 | 1.1 | **需求确认** |  | 2d | 2024-04-15 | 2024-04-16 |  | 陶旭 |  |
| 4 | 1.1.1 | 需求确认 |  | 1d | 2024-04-15 | 2024-04-15 |  |  |  |
| 5 | 1.1.2 | 需求评审&发布 | fixed end | 1d | 2024-04-16 | 2024-04-16 | 4 |  | waiting |
| 6 | 1.2 | **方案设计** |  | 18d | 2024-04-17 | 2024-05-10 |  |  |  |
| 7 | 1.2.1 | UX设计 | fixed end | 16d | 2024-04-17 | 2024-05-08 | 5 | 李博文 | waiting |
| 8 | 1.2.2 | 接口定义 | fixed end | 2d | 2024-05-09 | 2024-05-10 | 7 | 舒业超 | waiting |
| 9 | 1.3 | **软件开发** |  | 5d | 2024-05-13 | 2024-05-17 |  |  |  |
| 10 | 1.3.1 | 云控软件开发 |  | 5d | 2024-05-13 | 2024-05-17 | 8 | 舒业超 | waiting |
| 11 | 1.3.2 | 应用化软件开发 |  | 3d | 2024-05-13 | 2024-05-15 | 7, 8 | 周华强 | waiting |
| 12 | 1.4 | **联调测试** |  | 4d | 2024-05-20 | 2024-05-23 |  |  |  |
| 13 | 1.4.1 | 联调&自测 |  | 2d | 2024-05-20 | 2024-05-21 | 10, 11 | 舒业超、周华强 | waiting |
| 14 | 1.4.2 | 版本提测 | fixed end | 1d | 2024-05-22 | 2024-05-22 | 13 |  | waiting |
| 15 | 1.4.3 | 集成测试 | fixed end | 1d | 2024-05-23 | 2024-05-23 | 14 | 冯苏丽 | waiting |
| 16 | 1.5 | 功能验收 | fixed end | 1d | 2024-05-24 | 2024-05-24 | 15 | 陶旭 | waiting |
| 17 | 2 | **远程视频监控App** |  | 14d | 2024-04-30 | 2024-05-17 |  |  |  |
| 18 | 2.1 | **需求确认** |  | 1d | 2024-04-30 | 2024-04-30 |  |  |  |
| 19 | 2.1.1 | 需求评审发布 | fixed end | 1d | 2024-04-30 | 2024-04-30 |  | 陶旭 |  |
| 20 | 2.2 | **方案设计** |  | 5d | 2024-05-01 | 2024-05-07 |  |  |  |
| 21 | 2.2.1 | UX设计 | fixed end | 1d | 2024-05-01 | 2024-05-01 | 19 |  | waiting |
| 22 | 2.2.2 | 视频推流方案 |  | 1d | 2024-05-01 | 2024-05-01 | 19 | 叶良伟 | waiting |
| 23 | 2.3 | 占位任务（51劳动节） | fixed end | 3d | 2024-05-01 | 2024-05-03 |  | 全员 |  |
| 24 | 2.4 | **接口定义** |  | 3d | 2024-05-06 | 2024-05-08 |  | 刘宜春、曾优 |  |
| 25 | 2.4.1 | 智能化接口定义 |  | 2d | 2024-05-06 | 2024-05-07 | 23 | 曾优 | waiting |
| 26 | 2.4.2 | 云控接口定义 |  | 1d | 2024-05-08 | 2024-05-08 | 25 | 刘宜春 | waiting |

Notes:
- 22: 已完成（参考服务机器人推流方案）
- 25: 打开、关闭视像头接口

| ID | WBS | Task | Duration | Start | Finish | Predecessors | inPeople | Status |
| --- | --- | --- | --- | --- | --- | --- | --- | --- |
| 27 | 2.5 | **软件开发** | 3d | 2024-05-08 | 2024-05-10 |  |  |  |
| 28 | 2.5.1 | 云控软件开发 | 2d | 2024-05-09 | 2024-05-10 | 26 | 刘宜春 | waiting |
| 29 | 2.5.2 | 智能化软件开发 | 2d | 2024-05-08 | 2024-05-09 | 25 | 曾优 | waiting |
| 30 | 2.5.3 | 应用化软件开发 | 1d | 2024-05-09 | 2024-05-09 | 25, 26 | 周华强 | waiting |
| 31 | 2.6 | **联调测试** | 4d | 2024-05-13 | 2024-05-16 |  |  |  |
| 32 | 2.6.1 | 联调自测 | 3d | 2024-05-13 | 2024-05-15 | 28, 29, 30 |  | waiting |
| 34 | 2.6.2 | 集成测试 | 1d | 2024-05-16 | 2024-05-16 | 32 | 冯苏丽 | waiting |
| 35 | 2.7 | 功能验收 | 1d | 2024-05-17 | 2024-05-17 | 34 | 陶旭 | waiting |

Notes:
- 29: 斜上RGBD视像头画面数据
